# Создание карты города

How a schedule from MS Project changed from version to version. A marks actual dates.

## Version 1 (data date 2023-04-21, saved 2023-03-26, file task1.mpp)

Note of the change: Added labs, lectures, rk

| ID | WBS | Task | Duration | Start | Finish | Predecessors | Complete | Total float | Constraint |
| --- | --- | --- | --- | --- | --- | --- | --- | --- | --- |
| 1 |  | Начало проекта | 0w | 2023-03-01 09:00 A | 2023-03-01 09:00 A |  | 100% |  |  |
| 2 | 2 | **Создание интерфейса** | 78.66d | 2023-03-01 10:00 A | 2023-06-26 16:16 | 1 | 86% | 0d |  |
| 3 | 2.1 | **Разработка дизайна интерфейса** | 30.62d | 2023-03-01 10:00 A | 2023-04-13 16:00 A |  | 100% |  |  |
| 4 |  | Разработка 2D графических элементов | 3w | 2023-03-01 10:00 A | 2023-03-23 13:00 A |  | 100% |  |  |
| 5 |  | Разработка 3D графических элементов | 2w | 2023-03-01 10:00 A | 2023-03-16 12:00 A | 4SS | 100% |  |  |
| 6 |  | Создание заставки | 4w | 2023-03-16 12:00 A | 2023-04-13 16:00 A | 5 | 100% |  |  |
| 7 |  | Программирование интерфейса | 1.5w | 2023-06-15 11:16 | 2023-06-26 16:16 | 3, 12 |  | 0d |  |
| 8 | 3 | **Построение базы объектов** | 85.25d | 2023-03-23 14:00 A | 2023-07-26 16:00 |  | 25% | 0.91d |  |
| 9 |  | Анализ и построение структуры базы объектов | 2w | 2023-03-23 14:00 A | 2023-04-06 16:00 A |  | 100% |  |  |
| 10 |  | Программирование средств обработки базы объектов | 3w | 2023-04-06 16:00 A | 2023-04-27 16:00 | 9 | 75% | 0.91d |  |
| 11 |  | Наполнение базы объектов | 12w | 2023-04-27 16:00 | 2023-07-26 16:00 | 10 |  | 0.91d |  |
| 12 | 4 | **Создание ядра GIS** | 66.28d | 2023-03-08 09:00 A | 2023-06-15 11:16 |  | 52% | 0d |  |
| 13 |  | Анализ и проектирование ядра | 3w | 2023-03-08 09:00 A | 2023-03-30 12:00 A |  | 100% |  |  |
| 14 |  | Создание модели ядра | 2.02w | 2023-03-23 14:00 A | 2023-04-06 14:49 A | 13 | 100% |  |  |
| 15 |  | Тестирование модели ядра | 1w | 2023-04-06 14:49 A | 2023-04-13 14:49 A | 14 | 100% |  |  |
| 16 |  | Создание рабочей версии ядра | 8.14w | 2023-04-13 14:49 A | 2023-06-15 11:16 | 15 | 16% | 0d |  |
| 17 |  | Создание мультимедиа - наполнения | 6w | 2023-04-06 16:00 A | 2023-05-29 18:00 | 3 | 5% | 41.66d |  |
| 18 |  | Создание справочной системы | 2w | 2023-07-10 09:00 | 2023-07-24 11:00 | 7 |  | 3.41d |  |
| 19 | 7 | **Создание руководства пользователя** | 17.38d | 2023-06-09 16:16 | 2023-07-06 10:16 | 7FS-10d |  | 0d |  |
| 20 |  | Разработка дизайна руководства | 1w | 2023-06-09 16:16 | 2023-06-19 17:16 |  |  | 0d |  |
| 21 |  | Написание руководства пользователя | 3w | 2023-06-14 16:16 | 2023-07-06 10:16 | 20SS+2d |  | 0d |  |
| 22 | 8 | **Создание web-сайта и поддержка** | 23.62d | 2023-06-14 16:16 | 2023-07-18 12:16 |  |  | 0d |  |
| 23 |  | Разработка структуры сайта | 1d | 2023-06-14 16:16 | 2023-06-15 16:16 | 21SS |  | 0d |  |
| 24 |  | Разработка дизайна сайта | 1.43w | 2023-06-15 16:16 | 2023-06-27 09:16 | 23 |  | 0d |  |
| 25 |  | Наполнение сайта | 3w | 2023-06-27 09:16 | 2023-07-18 12:16 | 24 |  | 0d |  |
| 26 |  | Тестирование сайта | 2.45w | 2023-07-11 12:16 | 2023-07-27 15:19 | 22FS-1w |  | 0d |  |
| 27 |  | Сдача сайта в эксплуатацию | 0w | 2023-07-27 15:19 | 2023-07-27 15:19 | 26 |  | 0d |  |
| 28 | 11 | **Совещание** | 100.12d | 2023-03-01 09:00 | 2023-07-26 10:00 |  |  | 0d |  |
| 29 |  | Совещание 1 | 1h | 2023-03-01 09:00 | 2023-03-01 10:00 |  |  |  | start no earlier than 2023-03-01 09:00 |
| 30 |  | Совещание 2 | 1h | 2023-03-08 09:00 | 2023-03-08 10:00 |  |  |  | start no earlier than 2023-03-08 09:00 |
| 31 |  | Совещание 3 | 1h | 2023-03-15 09:00 | 2023-03-15 10:00 |  |  |  | start no earlier than 2023-03-15 09:00 |
| 32 |  | Совещание 4 | 1h | 2023-03-22 09:00 | 2023-03-22 10:00 |  |  |  | start no earlier than 2023-03-22 09:00 |
| 33 |  | Совещание 5 | 1h | 2023-03-29 09:00 | 2023-03-29 10:00 |  |  |  | start no earlier than 2023-03-29 09:00 |
| 34 |  | Совещание 6 | 1h | 2023-04-05 09:00 | 2023-04-05 10:00 |  |  |  | start no earlier than 2023-04-05 09:00 |
| 35 |  | Совещание 7 | 1h | 2023-04-12 09:00 | 2023-04-12 10:00 |  |  |  | start no earlier than 2023-04-12 09:00 |
| 36 |  | Совещание 8 | 1h | 2023-04-19 09:00 | 2023-04-19 10:00 |  |  |  | start no earlier than 2023-04-19 09:00 |
| 37 |  | Совещание 9 | 1h | 2023-04-26 09:00 | 2023-04-26 10:00 |  |  |  | start no earlier than 2023-04-26 09:00 |
| 38 |  | Совещание 10 | 1h | 2023-05-03 09:00 | 2023-05-03 10:00 |  |  |  | start no earlier than 2023-05-03 09:00 |
| 39 |  | Совещание 11 | 1h | 2023-05-10 09:00 | 2023-05-10 10:00 |  |  |  | start no earlier than 2023-05-10 09:00 |
| 40 |  | Совещание 12 | 1h | 2023-05-17 09:00 | 2023-05-17 10:00 |  |  |  | start no earlier than 2023-05-17 09:00 |
| 41 |  | Совещание 13 | 1h | 2023-05-24 09:00 | 2023-05-24 10:00 |  |  |  | start no earlier than 2023-05-24 09:00 |
| 42 |  | Совещание 14 | 1h | 2023-05-31 09:00 | 2023-05-31 10:00 |  |  |  | start no earlier than 2023-05-31 09:00 |
| 43 |  | Совещание 15 | 1h | 2023-06-07 09:00 | 2023-06-07 10:00 |  |  |  | start no earlier than 2023-06-07 09:00 |
| 44 |  | Совещание 16 | 1h | 2023-06-14 09:00 | 2023-06-14 10:00 |  |  |  | start no earlier than 2023-06-14 09:00 |
| 45 |  | Совещание 17 | 1h | 2023-06-21 09:00 | 2023-06-21 10:00 |  |  |  | start no earlier than 2023-06-21 09:00 |
| 46 |  | Совещание 18 | 1h | 2023-06-28 09:00 | 2023-06-28 10:00 |  |  |  | start no earlier than 2023-06-28 09:00 |
| 47 |  | Совещание 19 | 1h | 2023-07-05 09:00 | 2023-07-05 10:00 |  |  |  | start no earlier than 2023-07-05 09:00 |
| 48 |  | Совещание 20 | 1h | 2023-07-12 09:00 | 2023-07-12 10:00 |  |  |  | start no earlier than 2023-07-12 09:00 |
| 49 |  | Совещание 21 | 1h | 2023-07-19 09:00 | 2023-07-19 10:00 |  |  |  | start no earlier than 2023-07-19 09:00 |
| 50 |  | Совещание 22 | 1h | 2023-07-26 09:00 | 2023-07-26 10:00 |  |  |  | start no earlier than 2023-07-26 09:00 |

## Version 2 (data date 2023-04-21, saved 2023-03-27, file task2.mpp)

Note of the change: Added labs, lectures, rk

Last finish stays 2023-07-27. Complete tasks 8 → 16.

Changed:

| ID | Task | Start | Finish | Complete |
| --- | --- | --- | --- | --- |
| 17 | Создание мультимедиа - наполнения |  |  | 5% → 25% |
| 28 | **Совещание** | 2023-03-01 09:00 A |  | 0% → 36% |
| 29 | Совещание 1 | 2023-03-01 09:00 A | 2023-03-01 10:00 A | 0% → 100% |
| 30 | Совещание 2 | 2023-03-08 09:00 A | 2023-03-08 10:00 A | 0% → 100% |
| 31 | Совещание 3 | 2023-03-15 09:00 A | 2023-03-15 10:00 A | 0% → 100% |
| 32 | Совещание 4 | 2023-03-22 09:00 A | 2023-03-22 10:00 A | 0% → 100% |
| 33 | Совещание 5 | 2023-03-29 09:00 A | 2023-03-29 10:00 A | 0% → 100% |
| 34 | Совещание 6 | 2023-04-05 09:00 A | 2023-04-05 10:00 A | 0% → 100% |
| 35 | Совещание 7 | 2023-04-12 09:00 A | 2023-04-12 10:00 A | 0% → 100% |
| 36 | Совещание 8 | 2023-04-19 09:00 A | 2023-04-19 10:00 A | 0% → 100% |
